# G67 mold launches (block LAUNCH v1)

Schedule from MS Project XML, 2026-07-21 to 2026-11-11.

## Calendars

- Standard: Mon-Fri 08:00-12:00, 13:00-17:00; Sat-Sun off.

## Resources

| Resource | Group |
| --- | --- |
| Steven Stocks | Program Manager |
| Stacy Sexton | Plant Layout |
| Brandon Belk | Toolshop |
| Erica Gibson | Gauge / Metrology |
| Erika Harris | CMM Lab |
| Christopher Holmes | Trial Lead |
| Scott Damewood | Process Engineer (WI) |
| Kenny Rice | Packaging |
| Apurva Mhetre | Quality Engineer |
| Alexa Earls | Production Planning |
| Todd Haynes | Doc Control / ERP |
| Matthias Rautzenberg | Tool Engineering |
| Candy White | Purchasing |
| Huascar Miranda | Press / Plant Eng |

## Schedule

| ID | WBS | Task | Type | Duration | Start | Finish | Predecessors | Constraint | Resources | Text1 | Text2 |
| --- | --- | --- | --- | --- | --- | --- | --- | --- | --- | --- | --- |
| 1 | 1 | **G67 mold launches (block LAUNCH v1)** |  | 0d |  |  |  |  |  |  |  |
| 2 | 1.1 | **900-5: Mold 3355 (5A65DF8-03)** |  | 0d |  |  |  |  |  |  |  |
| 3 | 1.1.1 | Mold 3355: Assign location in plant layout |  | 15d | 2026-07-21 | 2026-08-10 |  | start no earlier than 2026-07-21 | Stacy Sexton | L01 | Plant Layout |
| 4 | 1.1.2 | Mold 3355: Mold delivery | milestone | 0d | 2026-08-10 | 2026-08-10 |  | start no earlier than 2026-08-10 |  | L02 | Program Manager |
| 5 | 1.1.3 | Mold 3355: Unpack / prep |  | 2d | 2026-08-11 | 2026-08-12 | 3, 4 |  | Brandon Belk | L03 | Toolshop |
| 6 | 1.1.4 | Mold 3355: Gauge validation |  | 1d | 2026-10-02 | 2026-10-02 |  | start no earlier than 2026-10-02 | Erica Gibson | L04 | Gauge / Metrology |
| 7 | 1.1.5 | Mold 3355: TH1 trial |  | 1d | 2026-10-07 | 2026-10-07 | 5, 6 | start no earlier than 2026-10-07 | Christopher Holmes | L05 | Trial Lead |
| 8 | 1.1.6 | Mold 3355: Complete work instructions |  | 9d | 2026-10-08 | 2026-10-20 | 7 |  | Scott Damewood | L06 | Process Engineer (WI) |
| 9 | 1.1.7 | Mold 3355: TH2 trial |  | 1d | 2026-10-21 | 2026-10-21 | 8 |  | Christopher Holmes | L07 | Trial Lead |
| 10 | 1.1.8 | Mold 3355: Packaging trial / instruction |  | 1d | 2026-10-21 | 2026-10-21 | 9SS |  | Kenny Rice | L08 | Packaging |
| 11 | 1.1.9 | Mold 3355: 6-pc dimensional (CMM) |  | 2d | 2026-10-22 | 2026-10-23 | 9 |  | Erika Harris | L09 | CMM Lab |
| 12 | 1.1.10 | Mold 3355: 30-pc Cpk |  | 4d | 2026-10-22 | 2026-10-27 | 9 |  | Apurva Mhetre | L10 | Quality Engineer |
| 13 | 1.1.11 | Mold 3355: Mold ready for PPAP | milestone | 0d | 2026-10-27 | 2026-10-27 | 10, 11, 12 |  |  | L11 | Program Manager |
| 14 | 1.2 | **1300-3: Mold 3363 (5A65E17-03, 5A65E18-03)** |  | 0d |  |  |  |  |  |  |  |
| 15 | 1.2.1 | Mold 3363: Assign location in plant layout |  | 15d | 2026-08-14 | 2026-09-03 |  | start no earlier than 2026-08-14 | Stacy Sexton | L01 | Plant Layout |
| 16 | 1.2.2 | Mold 3363: Mold delivery | milestone | 0d | 2026-09-03 | 2026-09-03 |  | start no earlier than 2026-09-03 |  | L02 | Program Manager |
| 17 | 1.2.3 | Mold 3363: Unpack / prep |  | 2d | 2026-09-04 | 2026-09-07 | 15, 16 |  | Brandon Belk | L03 | Toolshop |
| 18 | 1.2.4 | Mold 3363: Gauge validation |  | 1d | 2026-10-05 | 2026-10-05 |  | start no earlier than 2026-10-05 | Erica Gibson | L04 | Gauge / Metrology |
| 19 | 1.2.5 | Mold 3363: TH1 trial |  | 1d | 2026-10-08 | 2026-10-08 | 17, 18 | start no earlier than 2026-10-08 | Christopher Holmes | L05 | Trial Lead |
| 20 | 1.2.6 | Mold 3363: Complete work instructions |  | 9d | 2026-10-09 | 2026-10-21 | 19 |  | Scott Damewood | L06 | Process Engineer (WI) |
| 21 | 1.2.7 | Mold 3363: TH2 trial |  | 1d | 2026-10-22 | 2026-10-22 | 20 |  | Christopher Holmes | L07 | Trial Lead |
| 22 | 1.2.8 | Mold 3363: Packaging trial / instruction |  | 1d | 2026-10-22 | 2026-10-22 | 21SS |  | Kenny Rice | L08 | Packaging |
| 23 | 1.2.9 | Mold 3363: 6-pc dimensional (CMM) |  | 2d | 2026-10-23 | 2026-10-26 | 21 |  | Erika Harris | L09 | CMM Lab |
| 24 | 1.2.10 | Mold 3363: 30-pc Cpk |  | 4d | 2026-10-23 | 2026-10-28 | 21 |  | Apurva Mhetre | L10 | Quality Engineer |
| 25 | 1.2.11 | Mold 3363: Mold ready for PPAP | milestone | 0d | 2026-10-28 | 2026-10-28 | 22, 23, 24 |  |  | L11 | Program Manager |

Notes:
- 8: WI, first piece & safe launch WI, gauge WI
- 10: PDS / packaging instruction
- 11: all cavities
- 12: Weight; Thickness; every SPC characteristic on the control plan (from PDB)
- 20: WI, first piece & safe launch WI, gauge WI
- 22: PDS / packaging instruction
- 23: all cavities
- 24: Weight; Thickness; every SPC characteristic on the control plan (from PDB)

| ID | WBS | Task | Type | Duration | Start | Finish | Predecessors | Constraint | Resources | Text1 | Text2 |
| --- | --- | --- | --- | --- | --- | --- | --- | --- | --- | --- | --- |
| 26 | 1.3 | **1600-2: Mold 3370 (5B533A6-02)** |  | 0d |  |  |  |  |  |  |  |
| 27 | 1.3.1 | Mold 3370: Assign location in plant layout |  | 15d | 2026-08-14 | 2026-09-03 |  | start no earlier than 2026-08-14 | Stacy Sexton | L01 | Plant Layout |
| 28 | 1.3.2 | Mold 3370: Mold delivery | milestone | 0d | 2026-09-03 | 2026-09-03 |  | start no earlier than 2026-09-03 |  | L02 | Program Manager |
| 29 | 1.3.3 | Mold 3370: Unpack / prep |  | 2d | 2026-09-04 | 2026-09-07 | 27, 28 |  | Brandon Belk | L03 | Toolshop |
| 30 | 1.3.4 | Mold 3370: Gauge validation |  | 1d | 2026-10-06 | 2026-10-06 |  | start no earlier than 2026-10-06 | Erica Gibson | L04 | Gauge / Metrology |
| 31 | 1.3.5 | Mold 3370: TH1 trial |  | 1d | 2026-10-09 | 2026-10-09 | 29, 30 | start no earlier than 2026-10-09 | Christopher Holmes | L05 | Trial Lead |
| 32 | 1.3.6 | Mold 3370: Complete work instructions |  | 9d | 2026-10-12 | 2026-10-22 | 31 |  | Scott Damewood | L06 | Process Engineer (WI) |
| 33 | 1.3.7 | Mold 3370: TH2 trial |  | 1d | 2026-10-23 | 2026-10-23 | 32 |  | Christopher Holmes | L07 | Trial Lead |
| 34 | 1.3.8 | Mold 3370: Packaging trial / instruction |  | 1d | 2026-10-23 | 2026-10-23 | 33SS |  | Kenny Rice | L08 | Packaging |
| 35 | 1.3.9 | Mold 3370: 6-pc dimensional (CMM) |  | 2d | 2026-10-26 | 2026-10-27 | 33 |  | Erika Harris | L09 | CMM Lab |
| 36 | 1.3.10 | Mold 3370: 30-pc Cpk |  | 4d | 2026-10-26 | 2026-10-29 | 33 |  | Apurva Mhetre | L10 | Quality Engineer |
| 37 | 1.3.11 | Mold 3370: Mold ready for PPAP | milestone | 0d | 2026-10-29 | 2026-10-29 | 34, 35, 36 |  |  | L11 | Program Manager |
| 38 | 1.4 | **1300-2: Mold 3377 (9635313-02, 9635314-02)** |  | 0d |  |  |  |  |  |  |  |
| 39 | 1.4.1 | Mold 3377: Assign location in plant layout |  | 15d | 2026-07-21 | 2026-08-10 |  | start no earlier than 2026-07-21 | Stacy Sexton | L01 | Plant Layout |
| 40 | 1.4.2 | Mold 3377: Mold delivery | milestone | 0d | 2026-08-10 | 2026-08-10 |  | start no earlier than 2026-08-10 |  | L02 | Program Manager |
| 41 | 1.4.3 | Mold 3377: Unpack / prep |  | 2d | 2026-08-11 | 2026-08-12 | 39, 40 |  | Brandon Belk | L03 | Toolshop |
| 42 | 1.4.4 | Mold 3377: Gauge validation |  | 1d | 2026-10-07 | 2026-10-07 |  | start no earlier than 2026-10-07 | Erica Gibson | L04 | Gauge / Metrology |
| 43 | 1.4.5 | Mold 3377: TH1 trial |  | 1d | 2026-10-13 | 2026-10-13 | 41, 42 | start no earlier than 2026-10-13 | Christopher Holmes | L05 | Trial Lead |
| 44 | 1.4.6 | Mold 3377: Complete work instructions |  | 9d | 2026-10-14 | 2026-10-26 | 43 |  | Scott Damewood | L06 | Process Engineer (WI) |
| 45 | 1.4.7 | Mold 3377: TH2 trial |  | 1d | 2026-10-27 | 2026-10-27 | 44 |  | Christopher Holmes | L07 | Trial Lead |
| 46 | 1.4.8 | Mold 3377: Packaging trial / instruction |  | 1d | 2026-10-27 | 2026-10-27 | 45SS |  | Kenny Rice | L08 | Packaging |
| 47 | 1.4.9 | Mold 3377: 6-pc dimensional (CMM) |  | 2d | 2026-10-28 | 2026-10-29 | 45 |  | Erika Harris | L09 | CMM Lab |
| 48 | 1.4.10 | Mold 3377: 30-pc Cpk |  | 4d | 2026-10-28 | 2026-11-02 | 45 |  | Apurva Mhetre | L10 | Quality Engineer |
| 49 | 1.4.11 | Mold 3377: Mold ready for PPAP | milestone | 0d | 2026-11-02 | 2026-11-02 | 46, 47, 48 |  |  | L11 | Program Manager |

Notes:
- 32: WI, first piece & safe launch WI, gauge WI
- 34: PDS / packaging instruction
- 35: all cavities
- 36: Weight; Thickness; every SPC characteristic on the control plan (from PDB)
- 44: WI, first piece & safe launch WI, gauge WI
- 46: PDS / packaging instruction
- 47: all cavities
- 48: Weight; Thickness; every SPC characteristic on the control plan (from PDB)

| ID | WBS | Task | Type | Duration | Start | Finish | Predecessors | Constraint | Resources | Text1 | Text2 |
| --- | --- | --- | --- | --- | --- | --- | --- | --- | --- | --- | --- |
| 50 | 1.5 | **1300-3: Mold 3376 (9635311-02, 9635312-02)** |  | 0d |  |  |  |  |  |  |  |
| 51 | 1.5.1 | Mold 3376: Assign location in plant layout |  | 15d | 2026-07-21 | 2026-08-10 |  | start no earlier than 2026-07-21 | Stacy Sexton | L01 | Plant Layout |
| 52 | 1.5.2 | Mold 3376: Mold delivery | milestone | 0d | 2026-08-10 | 2026-08-10 |  | start no earlier than 2026-08-10 |  | L02 | Program Manager |
| 53 | 1.5.3 | Mold 3376: Unpack / prep |  | 2d | 2026-08-11 | 2026-08-12 | 51, 52 |  | Brandon Belk | L03 | Toolshop |
| 54 | 1.5.4 | Mold 3376: Gauge validation |  | 1d | 2026-10-14 | 2026-10-14 |  | start no earlier than 2026-10-14 | Erica Gibson | L04 | Gauge / Metrology |
| 55 | 1.5.5 | Mold 3376: TH1 trial |  | 1d | 2026-10-15 | 2026-10-15 | 53, 54 |  | Christopher Holmes | L05 | Trial Lead |
| 56 | 1.5.6 | Mold 3376: Complete work instructions |  | 9d | 2026-10-16 | 2026-10-28 | 55 |  | Scott Damewood | L06 | Process Engineer (WI) |
| 57 | 1.5.7 | Mold 3376: TH2 trial |  | 1d | 2026-10-29 | 2026-10-29 | 56 |  | Christopher Holmes | L07 | Trial Lead |
| 58 | 1.5.8 | Mold 3376: Packaging trial / instruction |  | 1d | 2026-10-29 | 2026-10-29 | 57SS |  | Kenny Rice | L08 | Packaging |
| 59 | 1.5.9 | Mold 3376: 6-pc dimensional (CMM) |  | 2d | 2026-10-30 | 2026-11-02 | 57 |  | Erika Harris | L09 | CMM Lab |
| 60 | 1.5.10 | Mold 3376: 30-pc Cpk |  | 4d | 2026-10-30 | 2026-11-04 | 57 |  | Apurva Mhetre | L10 | Quality Engineer |
| 61 | 1.5.11 | Mold 3376: Mold ready for PPAP | milestone | 0d | 2026-11-04 | 2026-11-04 | 58, 59, 60 |  |  | L11 | Program Manager |
| 62 | 1.6 | **1600-2: Mold 3362 (5A65E00-03, 5A65E00-04)** |  | 0d |  |  |  |  |  |  |  |
| 63 | 1.6.1 | Mold 3362: Assign location in plant layout |  | 15d | 2026-08-14 | 2026-09-03 |  | start no earlier than 2026-08-14 | Stacy Sexton | L01 | Plant Layout |
| 64 | 1.6.2 | Mold 3362: Mold delivery | milestone | 0d | 2026-09-03 | 2026-09-03 |  | start no earlier than 2026-09-03 |  | L02 | Program Manager |
| 65 | 1.6.3 | Mold 3362: Unpack / prep |  | 2d | 2026-09-04 | 2026-09-07 | 63, 64 |  | Brandon Belk | L03 | Toolshop |
| 66 | 1.6.4 | Mold 3362: Gauge validation |  | 1d | 2026-10-15 | 2026-10-15 |  | start no earlier than 2026-10-15 | Erica Gibson | L04 | Gauge / Metrology |
| 67 | 1.6.5 | Mold 3362: TH1 trial |  | 1d | 2026-10-16 | 2026-10-16 | 65, 66 | start no earlier than 2026-10-15 | Christopher Holmes | L05 | Trial Lead |
| 68 | 1.6.6 | Mold 3362: Complete work instructions |  | 9d | 2026-10-19 | 2026-10-29 | 67 |  | Scott Damewood | L06 | Process Engineer (WI) |
| 69 | 1.6.7 | Mold 3362: TH2 trial |  | 1d | 2026-10-30 | 2026-10-30 | 68 |  | Christopher Holmes | L07 | Trial Lead |
| 70 | 1.6.8 | Mold 3362: Packaging trial / instruction |  | 1d | 2026-10-30 | 2026-10-30 | 69SS |  | Kenny Rice | L08 | Packaging |
| 71 | 1.6.9 | Mold 3362: 6-pc dimensional (CMM) |  | 2d | 2026-11-02 | 2026-11-03 | 69 |  | Erika Harris | L09 | CMM Lab |
| 72 | 1.6.10 | Mold 3362: 30-pc Cpk |  | 4d | 2026-11-02 | 2026-11-05 | 69 |  | Apurva Mhetre | L10 | Quality Engineer |
| 73 | 1.6.11 | Mold 3362: Mold ready for PPAP | milestone | 0d | 2026-11-05 | 2026-11-05 | 70, 71, 72 |  |  | L11 | Program Manager |

Notes:
- 56: WI, first piece & safe launch WI, gauge WI
- 58: PDS / packaging instruction
- 59: all cavities
- 60: Weight; Thickness; every SPC characteristic on the control plan (from PDB)
- 68: WI, first piece & safe launch WI, gauge WI
- 70: PDS / packaging instruction
- 71: all cavities
- 72: Weight; Thickness; every SPC characteristic on the control plan (from PDB)

| ID | WBS | Task | Type | Duration | Start | Finish | Predecessors | Constraint | Resources | Text1 | Text2 |
| --- | --- | --- | --- | --- | --- | --- | --- | --- | --- | --- | --- |
| 74 | 1.7 | **1600-2: Mold 3343 (5A87904-02, 5A65C28-02)** |  | 0d |  |  |  |  |  |  |  |
| 75 | 1.7.1 | Mold 3343: Assign location in plant layout |  | 15d | 2026-08-14 | 2026-09-03 |  | start no earlier than 2026-08-14 | Stacy Sexton | L01 | Plant Layout |
| 76 | 1.7.2 | Mold 3343: Mold delivery | milestone | 0d | 2026-09-03 | 2026-09-03 |  | start no earlier than 2026-09-03 |  | L02 | Program Manager |
| 77 | 1.7.3 | Mold 3343: Unpack / prep |  | 2d | 2026-09-04 | 2026-09-07 | 75, 76 |  | Brandon Belk | L03 | Toolshop |
| 78 | 1.7.4 | Mold 3343: Gauge validation |  | 1d | 2026-10-15 | 2026-10-15 |  | start no earlier than 2026-10-15 | Erica Gibson | L04 | Gauge / Metrology |
| 79 | 1.7.5 | Mold 3343: TH1 trial |  | 1d | 2026-10-16 | 2026-10-16 | 77, 78 | start no earlier than 2026-10-16 | Christopher Holmes | L05 | Trial Lead |
| 80 | 1.7.6 | Mold 3343: Complete work instructions |  | 9d | 2026-10-19 | 2026-10-29 | 79 |  | Scott Damewood | L06 | Process Engineer (WI) |
| 81 | 1.7.7 | Mold 3343: TH2 trial |  | 1d | 2026-10-30 | 2026-10-30 | 80 |  | Christopher Holmes | L07 | Trial Lead |
| 82 | 1.7.8 | Mold 3343: Packaging trial / instruction |  | 1d | 2026-10-30 | 2026-10-30 | 81SS |  | Kenny Rice | L08 | Packaging |
| 83 | 1.7.9 | Mold 3343: 6-pc dimensional (CMM) |  | 2d | 2026-11-02 | 2026-11-03 | 81 |  | Erika Harris | L09 | CMM Lab |
| 84 | 1.7.10 | Mold 3343: 30-pc Cpk |  | 4d | 2026-11-02 | 2026-11-05 | 81 |  | Apurva Mhetre | L10 | Quality Engineer |
| 85 | 1.7.11 | Mold 3343: Mold ready for PPAP | milestone | 0d | 2026-11-05 | 2026-11-05 | 82, 83, 84 |  |  | L11 | Program Manager |
| 86 | 1.8 | **1300-3: Mold 3347 (5B6CA70-04)** |  | 0d |  |  |  |  |  |  |  |
| 87 | 1.8.1 | Mold 3347: Assign location in plant layout |  | 15d | 2026-07-21 | 2026-08-10 |  | start no earlier than 2026-07-21 | Stacy Sexton | L01 | Plant Layout |
| 88 | 1.8.2 | Mold 3347: Mold delivery | milestone | 0d | 2026-08-10 | 2026-08-10 |  | start no earlier than 2026-08-10 |  | L02 | Program Manager |
| 89 | 1.8.3 | Mold 3347: Unpack / prep |  | 2d | 2026-08-11 | 2026-08-12 | 87, 88 |  | Brandon Belk | L03 | Toolshop |
| 90 | 1.8.4 | Mold 3347: Gauge validation |  | 1d | 2026-10-16 | 2026-10-16 |  | start no earlier than 2026-10-16 | Erica Gibson | L04 | Gauge / Metrology |
| 91 | 1.8.5 | Mold 3347: TH1 trial |  | 1d | 2026-10-20 | 2026-10-20 | 89, 90 | start no earlier than 2026-10-20 | Christopher Holmes | L05 | Trial Lead |
| 92 | 1.8.6 | Mold 3347: Complete work instructions |  | 9d | 2026-10-21 | 2026-11-02 | 91 |  | Scott Damewood | L06 | Process Engineer (WI) |
| 93 | 1.8.7 | Mold 3347: TH2 trial |  | 1d | 2026-11-03 | 2026-11-03 | 92 |  | Christopher Holmes | L07 | Trial Lead |
| 94 | 1.8.8 | Mold 3347: Packaging trial / instruction |  | 1d | 2026-11-03 | 2026-11-03 | 93SS |  | Kenny Rice | L08 | Packaging |
| 95 | 1.8.9 | Mold 3347: 6-pc dimensional (CMM) |  | 2d | 2026-11-04 | 2026-11-05 | 93 |  | Erika Harris | L09 | CMM Lab |
| 96 | 1.8.10 | Mold 3347: 30-pc Cpk |  | 4d | 2026-11-04 | 2026-11-09 | 93 |  | Apurva Mhetre | L10 | Quality Engineer |
| 97 | 1.8.11 | Mold 3347: Mold ready for PPAP | milestone | 0d | 2026-11-09 | 2026-11-09 | 94, 95, 96 |  |  | L11 | Program Manager |

Notes:
- 80: WI, first piece & safe launch WI, gauge WI
- 82: PDS / packaging instruction
- 83: all cavities
- 84: Weight; Thickness; every SPC characteristic on the control plan (from PDB)
- 92: WI, first piece & safe launch WI, gauge WI
- 94: PDS / packaging instruction
- 95: all cavities
- 96: Weight; Thickness; every SPC characteristic on the control plan (from PDB)

| ID | WBS | Task | Type | Duration | Start | Finish | Predecessors | Constraint | Resources | Text1 | Text2 |
| --- | --- | --- | --- | --- | --- | --- | --- | --- | --- | --- | --- |
| 98 | 1.9 | **550: Mold 3352 (5B6CA81-02, 5B6CA82-02)** |  | 0d |  |  |  |  |  |  |  |
| 99 | 1.9.1 | Mold 3352: Assign location in plant layout |  | 15d | 2026-08-14 | 2026-09-03 |  | start no earlier than 2026-08-14 | Stacy Sexton | L01 | Plant Layout |
| 100 | 1.9.2 | Mold 3352: Mold delivery | milestone | 0d | 2026-09-03 | 2026-09-03 |  | start no earlier than 2026-09-03 |  | L02 | Program Manager |
| 101 | 1.9.3 | Mold 3352: Unpack / prep |  | 2d | 2026-09-04 | 2026-09-07 | 99, 100 |  | Brandon Belk | L03 | Toolshop |
| 102 | 1.9.4 | Mold 3352: Gauge validation |  | 1d | 2026-10-19 | 2026-10-19 |  | start no earlier than 2026-10-19 | Erica Gibson | L04 | Gauge / Metrology |
| 103 | 1.9.5 | Mold 3352: TH1 trial |  | 1d | 2026-10-22 | 2026-10-22 | 101, 102 | start no earlier than 2026-10-22 | Christopher Holmes | L05 | Trial Lead |
| 104 | 1.9.6 | Mold 3352: Complete work instructions |  | 9d | 2026-10-23 | 2026-11-04 | 103 |  | Scott Damewood | L06 | Process Engineer (WI) |
| 105 | 1.9.7 | Mold 3352: TH2 trial |  | 1d | 2026-11-05 | 2026-11-05 | 104 |  | Christopher Holmes | L07 | Trial Lead |
| 106 | 1.9.8 | Mold 3352: Packaging trial / instruction |  | 1d | 2026-11-05 | 2026-11-05 | 105SS |  | Kenny Rice | L08 | Packaging |
| 107 | 1.9.9 | Mold 3352: 6-pc dimensional (CMM) |  | 2d | 2026-11-06 | 2026-11-09 | 105 |  | Erika Harris | L09 | CMM Lab |
| 108 | 1.9.10 | Mold 3352: 30-pc Cpk |  | 4d | 2026-11-06 | 2026-11-11 | 105 |  | Apurva Mhetre | L10 | Quality Engineer |
| 109 | 1.9.11 | Mold 3352: Mold ready for PPAP | milestone | 0d | 2026-11-11 | 2026-11-11 | 106, 107, 108 |  |  | L11 | Program Manager |

Notes:
- 104: WI, first piece & safe launch WI, gauge WI
- 106: PDS / packaging instruction
- 107: all cavities
- 108: Weight; Thickness; every SPC characteristic on the control plan (from PDB)
